# QLDALT_Tuan9

Schedule from MS Project, 2024-01-05 to 2025-05-23.

## Calendars

- Standard: Mon-Fri 08:00-12:00, 13:00-17:00; Sat-Sun off.

## Resources

| Resource |
| --- |
| My |
| Thi |
| Khánh |
| Mai |

## Schedule

| ID | WBS | Task | Type | Duration | Start | Finish | Predecessors | Total slack | Free slack | Constraint | Resources | Work | Text1 |
| --- | --- | --- | --- | --- | --- | --- | --- | --- | --- | --- | --- | --- | --- |
| 1 | 1 | **Tổng kết dự án** |  | 361d | 2024-01-05 | 2025-05-23 |  | 0d |  |  |  | 9112h |  |
| 2 | 1.1 | **Chuẩn bị dự án** |  | 20d | 2024-01-05 | 2024-02-01 |  | 57d |  |  |  | 256h |  |
| 3 | 1.1.1 | **Lập kế hoạch dự án** |  | 5d | 2024-01-05 | 2024-01-11 |  | 352d |  |  |  | 104h |  |
| 4 | 1.1.1.1 | Xác định mục tiêu dự án |  | 2d | 2024-01-05 | 2024-01-08 |  | 352d | 0d |  | Khánh; Mai; My; Thi | 64h |  |
| 5 | 1.1.1.2 | Nghiên cứu các dự án trước |  | 1d | 2024-01-09 | 2024-01-09 | 4 | 352d | 0d |  | Khánh; My | 16h |  |
| 6 | 1.1.1.3 | Viết tài liệu khởi tạo dự án |  | 2d | 2024-01-10 | 2024-01-11 | 5 | 356d |  |  | My | 16h | Tài liệu khởi tạo dự án |
| 7 | 1.1.1.4 | Tạo mẫu các loại tài liệu |  | 1d | 2024-01-10 | 2024-01-10 | 5 | 352d | 0d |  | Thi | 8h | Các mẫu tài liệu dự án |
| 8 | 1.1.2 | Xác định phạm vi |  | 2d | 2024-01-11 | 2024-01-12 | 7 | 352d | 0d |  | My | 16h | Tài liệu phạm vi dự án |
| 9 | 1.1.3 | **Xác định và cài đặt môi trường dự án** |  | 3d | 2024-01-15 | 2024-01-17 |  | 352d |  |  |  | 48h |  |
| 10 | 1.1.3.1 | Xác định và cài đặt môi trường sử dụng |  | 2d | 2024-01-15 | 2024-01-16 | 8 | 352d | 0d |  | Khánh | 16h |  |
| 11 | 1.1.3.2 | Xác định, cài đặt môi trường và các công cụ phát triển |  | 2d | 2024-01-15 | 2024-01-16 | 8 | 352d | 0d |  | My | 16h |  |
| 12 | 1.1.3.3 | Tổng hợp tài liệu môi trường |  | 1d | 2024-01-17 | 2024-01-17 | 10, 11 | 352d |  |  | Khánh; My | 16h | Tài liệu cài đặt môi trường dự án |
| 13 | 1.1.4 | **Xác định và phân tích rủi ro** |  | 4d | 2024-01-24 | 2024-01-29 |  | 43d |  |  |  | 40h |  |
| 14 | 1.1.4.1 | Xác định rủi ro |  | 2d | 2024-01-24 | 2024-01-25 |  | 44d | 1d | start no earlier than 2024-01-24 | My | 16h |  |
| 15 | 1.1.4.2 | Phân tích rủi ro và đề xuất giải pháp |  | 2d | 2024-01-25 | 2024-01-26 |  | 43d | 0d | start no earlier than 2024-01-25 | My | 16h |  |
| 16 | 1.1.4.3 | Viết tài liệu rủi ro |  | 1d | 2024-01-29 | 2024-01-29 | 14, 15 | 43d | 0d |  | My | 8h | Tài liệu xác định và phân tích rủi ro |
| 17 | 1.1.5 | Tổng hợp tài liệu chuẩn bị dự án |  | 2d | 2024-01-30 | 2024-01-31 | 16 | 43d | 0d |  | My | 16h | Tài liệu chuẩn bị dự án |
| 18 | 1.1.6 | MKS / Khợi tạo dự án | milestone | 1d | 2024-02-01 | 2024-02-01 | 17 | 43d | 0d |  | Khánh; Mai; My; Thi | 32h |  |
| 19 | 1.2 | **Khảo sát** |  | 78d | 2024-02-02 | 2024-05-21 |  | 0d |  |  |  | 1552h |  |
| 20 | 1.2.1 | **Khảo sát nghiệp vụ quản lý hồ sơ nhân sự** |  | 30d | 2024-02-02 | 2024-03-14 |  | 43d |  |  |  | 240h |  |
| 21 | 1.2.1.1 | Lập bảng biểu câu hỏi |  | 2d | 2024-02-02 | 2024-02-05 | 18 | 43d | 0d |  | My | 16h |  |
| 22 | 1.2.1.2 | Khảo sát bộ phận nhân sự qua form bảng hỏi, trực tiếp |  | 25d | 2024-02-06 | 2024-03-11 | 21 | 43d | 0d |  | My | 200h |  |
| 23 | 1.2.1.3 | Tổng hợp tài liệu khảo sát nghiệp vụ quản lý hồ sơ nhân sự |  | 3d | 2024-03-12 | 2024-03-14 | 22 | 43d |  |  | My | 24h | Tài liệu khảo sát nghiệp vụ quản lý hồ sơ nhân sự |
| 24 | 1.2.2 | **Khảo sát nghiệp vụ chấm công** |  | 30d | 2024-02-02 | 2024-03-14 |  | 43d |  |  |  | 240h |  |
| 25 | 1.2.2.1 | Lập bảng biểu câu hỏi |  | 2d | 2024-02-02 | 2024-02-05 | 18 | 43d | 0d |  | Thi | 16h |  |
| 26 | 1.2.2.2 | Khảo sát nhân viên và bộ phận quản lý nhân sự qua form bảng hỏi, trực tiếp |  | 25d | 2024-02-06 | 2024-03-11 | 25 | 43d | 0d |  | Thi | 200h |  |
| 27 | 1.2.2.3 | Tổng hợp tài liệu khảo sát nghiệp vụ chấm công |  | 3d | 2024-03-12 | 2024-03-14 | 26 | 43d |  |  | Thi | 24h | Tài liệu khảo sát nghiệp vụ chấm công |

| ID | WBS | Task | Type | Duration | Start | Finish | Predecessors | Total slack | Free slack | Constraint | Resources | Work | Text1 |
| --- | --- | --- | --- | --- | --- | --- | --- | --- | --- | --- | --- | --- | --- |
| 28 | 1.2.3 | **Khảo sát nghiệp vụ quản lý lương và chế độ phúc lợi** |  | 30d | 2024-02-02 | 2024-03-14 |  | 43d |  |  |  | 240h |  |
| 29 | 1.2.3.1 | Lập bảng biểu câu hỏi |  | 2d | 2024-02-02 | 2024-02-05 | 18 | 43d | 0d |  | Khánh | 16h |  |
| 30 | 1.2.3.2 | Khảo sát bộ phận nhân sự, bộ phận kế toán và bộ phận quản lý cấp cao qua form bảng hỏi, trực tiếp |  | 25d | 2024-02-06 | 2024-03-11 | 29 | 43d | 0d |  | Khánh | 200h |  |
| 31 | 1.2.3.3 | Tổng hợp nghiệp vụ quản lý lương và chế độ phúc lợi |  | 3d | 2024-03-12 | 2024-03-14 | 30 | 43d |  |  | Khánh | 24h | Tài liệu khảo sát nghiệp vụ quản lý lương và chế độ phúc lợi |
| 32 | 1.2.4 | **Khảo sát nghiệp vụ quản lý tuyển dụng** |  | 30d | 2024-04-03 | 2024-05-14 |  | 0d |  |  |  | 240h |  |
| 33 | 1.2.4.1 | Lập bảng biểu câu hỏi |  | 2d | 2024-04-03 | 2024-04-04 |  | 0d |  | start no earlier than 2024-04-03 | My | 16h |  |
| 34 | 1.2.4.2 | Khảo sát bộ phận nhân sự, bộ phận tuyển dụng qua form bảng hỏi, trực tiếp |  | 25d | 2024-04-05 | 2024-05-09 | 33 | 0d |  |  | My | 200h |  |
| 35 | 1.2.4.3 | Tổng hợp nghiệp vụ quản lý tuyển dụng |  | 3d | 2024-05-10 | 2024-05-14 | 34 | 0d |  |  | My | 24h | Tài liệu khảo sát nghiệp vụ quản lý tuyển dụng |
| 36 | 1.2.5 | **Khảo sát nghiệp vụ quản lý đào tạo** |  | 30d | 2024-04-03 | 2024-05-14 |  | 0d |  |  |  | 240h |  |
| 37 | 1.2.5.1 | Lập bảng biểu câu hỏi |  | 2d | 2024-04-03 | 2024-04-04 |  | 0d |  | start no earlier than 2024-04-03 | Khánh | 16h |  |
| 38 | 1.2.5.2 | Khảo sát bộ phận nhân sự,quản lý cấp cao, bộ phận quản lý chất lượng và rủi ro, bộ phận IT qua form bảng hỏi, trực tiếp |  | 25d | 2024-04-05 | 2024-05-09 | 37 | 0d |  |  | Khánh | 200h |  |
| 39 | 1.2.5.3 | Tổng hợp nghiệp vụ quản lý đào tạo |  | 3d | 2024-05-10 | 2024-05-14 | 38 | 0d |  |  | Khánh | 24h | Tài liệu khảo sát nghiệp vụ quản lý đào tạo |
| 40 | 1.2.6 | **Khảo sát nghiệp vụ báo cáo thống kê** |  | 30d | 2024-04-03 | 2024-05-14 |  | 0d |  |  |  | 240h |  |
| 41 | 1.2.6.1 | Lập bảng biểu câu hỏi |  | 2d | 2024-04-03 | 2024-04-04 |  | 0d |  | start no earlier than 2024-04-03 | Mai | 16h |  |
| 42 | 1.2.6.2 | Khảo sát bộ phận nhân sự, bộ phận phân tích dữ liệu qua form bảng hỏi, trực tiếp |  | 25d | 2024-04-05 | 2024-05-09 | 41 | 0d |  |  | Mai | 200h |  |
| 43 | 1.2.6.3 | Tổng hợp nghiệp vụ báo cáo thống kê |  | 3d | 2024-05-10 | 2024-05-14 | 42 | 0d |  |  | Mai | 24h | Tài liệu khảo sát nghiệp vụ báo cáo thống kê |
| 44 | 1.2.7 | Tổng hợp tài liệu khảo sát |  | 3d | 2024-05-15 | 2024-05-17 | 20, 24, 28, 32, 36, 40 | 0d |  |  | My; Thi | 48h | Tài liệu khảo sát |
| 45 | 1.2.8 | MKS / Xác định yêu cầu hệ thống | milestone | 2d | 2024-05-20 | 2024-05-21 | 44 | 0d |  |  | Khánh; Mai; My; Thi | 64h |  |
| 46 | 1.3 | **Phân tích** |  | 39d | 2024-05-22 | 2024-07-15 |  | 0d |  |  |  | 928h |  |
| 47 | 1.3.1 | **Mô hình hóa quy trình nghiệp vụ** |  | 5d | 2024-05-22 | 2024-05-28 |  | 0d |  |  |  | 112h |  |
| 48 | 1.3.1.1 | MHH QTNV quản lý hồ sơ nhân sự |  | 2d | 2024-05-22 | 2024-05-23 | 45 | 0d |  | start no earlier than 2024-05-22 | My | 16h |  |
| 49 | 1.3.1.2 | MHH QTNV chấm công |  | 2d | 2024-05-22 | 2024-05-23 | 45 | 0d |  | start no earlier than 2024-05-22 | My | 16h |  |
| 50 | 1.3.1.3 | MHH QTNV quản lý lương và chế độ phúc lợi |  | 2d | 2024-05-22 | 2024-05-23 | 45 | 0d |  | start no earlier than 2024-05-22 | My | 16h |  |
| 51 | 1.3.1.4 | MHH QTNV quản lý tuyển dụng |  | 2d | 2024-05-24 | 2024-05-27 | 48 | 0d |  |  | Thi | 16h |  |
| 52 | 1.3.1.5 | MHH QTNV quản lý đào tạo |  | 2d | 2024-05-24 | 2024-05-27 | 49 | 0d |  |  | Thi | 16h |  |
| 53 | 1.3.1.6 | MHH QTNV báo cáo thống kê |  | 2d | 2024-05-24 | 2024-05-27 | 50 | 0d |  |  | Thi | 16h |  |
| 54 | 1.3.1.7 | Tổng hợp tài liệu mô hình hóa quy trình nghiệp vụ |  | 1d | 2024-05-28 | 2024-05-28 | 48, 49, 50, 51, 52, 53 | 0d |  |  | My; Thi | 16h | Tài liệu mô hình quá quy trình nghiệp vụ |

| ID | WBS | Task | Duration | Start | Finish | Predecessors | Total slack | Resources | Work | Text1 |
| --- | --- | --- | --- | --- | --- | --- | --- | --- | --- | --- |
| 55 | 1.3.2 | **Liệt kê các chức năng chính, và xây dụng sơ đồ tổng quan các chức năng, sơ đồ luồng công việc** | 5d | 2024-05-29 | 2024-06-04 |  | 0d |  | 112h |  |
| 56 | 1.3.2.1 | Nghiệp vụ quản lý hồ sơ nhân sự | 2d | 2024-05-29 | 2024-05-30 | 47 | 0d | My | 16h |  |
| 57 | 1.3.2.2 | Nghiệp vụ chấm công | 2d | 2024-05-29 | 2024-05-30 | 47 | 2d | My | 16h |  |
| 58 | 1.3.2.3 | Nghiệp vụ quản lý lương và chế độ phúc lợi | 2d | 2024-05-29 | 2024-05-30 | 47 | 0d | My | 16h |  |
| 59 | 1.3.2.4 | Nghiệp vụ quản lý tuyển dụng | 2d | 2024-05-29 | 2024-05-30 | 47 | 2d | Thi | 16h |  |
| 60 | 1.3.2.5 | Nghiệp vụ quản lý đào tạo | 2d | 2024-05-31 | 2024-06-03 | 56 | 0d | Thi | 16h |  |
| 61 | 1.3.2.6 | Nghiệp vụ báo cáo thống kê | 2d | 2024-05-31 | 2024-06-03 | 58 | 0d | Thi | 16h |  |
| 62 | 1.3.2.7 | Tổng hợp tài liệu các sơ đồ tổng quan chức năng và luồng công việc | 1d | 2024-06-04 | 2024-06-04 | 56, 57, 58, 59, 60, 61 | 0d | My; Thi | 16h | Tài liệu sơ đồ tổng quan chức năng và luồng công việc |
| 63 | 1.3.3 | **Mô tả các tác nhân , thực thể, các chức năng chính** | 5d | 2024-06-05 | 2024-06-11 | 55 | 0d |  | 112h |  |
| 64 | 1.3.3.1 | Nghiệp vụ quản lý hồ sơ nhân sự | 2d | 2024-06-05 | 2024-06-06 | 55 | 2d | My | 16h |  |
| 65 | 1.3.3.2 | Nghiệp vụ quản lý chấm công | 2d | 2024-06-05 | 2024-06-06 | 55 | 0d | My | 16h |  |
| 66 | 1.3.3.3 | Nghiệp vụ quản lý lương và chế độ phúc lợi | 2d | 2024-06-05 | 2024-06-06 | 55 | 2d | My | 16h |  |
| 67 | 1.3.3.4 | Nghiệp vụ quản lý tuyển dụng | 2d | 2024-06-05 | 2024-06-06 | 55 | 0d | Thi | 16h |  |
| 68 | 1.3.3.5 | Nghiệp vụ quản lý đào tạo | 2d | 2024-06-07 | 2024-06-10 | 65 | 0d | Thi | 16h |  |
| 69 | 1.3.3.6 | Nghiệp vụ báo cáo thống kê | 2d | 2024-06-07 | 2024-06-10 | 67 | 0d | Thi | 16h |  |
| 70 | 1.3.3.7 | Tổng hợp tài liệu mô tả các tác nhân, thực thể, các chức năng chính | 1d | 2024-06-11 | 2024-06-11 | 64, 65, 66, 67, 68, 69 | 0d | My; Thi | 16h | Tài liệu mô tả các tác nhân, thực thể, các chức năng chính |
| 71 | 1.3.4 | **Đặc tả các chức năng chính của hệ thống và viết tài liệu đặc tả** | 20d | 2024-06-12 | 2024-07-09 |  | 0d |  | 512h |  |
| 72 | 1.3.4.1 | Nghiệp vụ quản lý hồ sơ nhân sự | 12d | 2024-06-12 | 2024-06-27 | 63 | 0d | My | 96h | Tài liệu đặc tả nghiệp vụ quản lý hồ sơ nhân sự |
| 73 | 1.3.4.2 | Nghiệp vụ chấm công | 12d | 2024-06-12 | 2024-06-27 | 63 | 0d | My | 96h | Tài liệu đặc tả nghiệp vụ chấm công |
| 74 | 1.3.4.3 | Nghiệp vụ quản lý lương và chế độ phúc lợi | 12d | 2024-06-12 | 2024-06-27 | 63 | 0d | My | 96h | Tài liệu đặc tả nghiệp vụ quản lý lương và chế độ phúc lợi |
| 75 | 1.3.4.4 | Nghiệp vụ quản lý tuyển dụng | 12d | 2024-06-12 | 2024-06-27 | 63 | 0d | Thi | 96h | Tài liệu đặc tả nghiệp vụ quản lý tuyển dụng |
| 76 | 1.3.4.5 | Nghiệp vụ quản lý đào tạo | 6d | 2024-06-28 | 2024-07-05 | 73, 74 | 0d | Thi | 48h | Tài liệu đặc tả nghiệp vụ quản lý đào tạo |
| 77 | 1.3.4.6 | Nghiệp vụ báo cáo thống kê | 6d | 2024-06-28 | 2024-07-05 | 72, 75 | 0d | Thi | 48h | Tài liệu đặc tả nghiệp vụ báo cáo thống kê |
| 78 | 1.3.4.7 | Tổng hợp tài liệu đặc tả chức năng | 2d | 2024-07-08 | 2024-07-09 | 72, 73, 74, 75, 76, 77 | 0d | My; Thi | 32h |  |
| 79 | 1.3.5 | Lựa chọn kiến trúc hệ thống, cơ sở dữ liệu | 1d | 2024-07-10 | 2024-07-10 | 71 | 0d | Thi; My | 16h |  |
| 80 | 1.3.6 | Tổng hợp tài liệu phân tích | 2d | 2024-07-11 | 2024-07-12 | 47, 55, 63, 71, 79 | 0d | My; Thi | 32h | Tài liệu phân tích |
| 81 | 1.3.7 | MKS / Phân tích | 1d | 2024-07-15 | 2024-07-15 | 80 | 0d | Khánh; Mai; My; Thi | 32h |  |

| ID | WBS | Task | Duration | Start | Finish | Predecessors | Total slack | Resources | Work |
| --- | --- | --- | --- | --- | --- | --- | --- | --- | --- |
| 82 | 1.4 | **Thiết kế hệ thống** | 86d | 2024-07-16 | 2024-11-12 |  | 0d |  | 3048h |
| 83 | 1.4.1 | **Thiết kế sơ đồ lớp phân tích cho các chức năng** | 14d | 2024-07-16 | 2024-08-02 |  | 0d |  | 352h |
| 84 | 1.4.1.1 | Nghiệp vụ quản lý hồ sơ nhân sự | 8d | 2024-07-16 | 2024-07-25 | 81 | 0d | Mai | 64h |
| 85 | 1.4.1.2 | Nghiệp vụ quản lý chấm công | 8d | 2024-07-16 | 2024-07-25 | 81 | 0d | Mai | 64h |
| 86 | 1.4.1.3 | Nghiệp vụ quản lý lương và chế độ phúc lợi | 8d | 2024-07-16 | 2024-07-25 | 81 | 0d | Mai | 64h |
| 87 | 1.4.1.4 | Nghiệp vụ quản lý tuyển dụng | 8d | 2024-07-16 | 2024-07-25 | 81 | 0d | Thi | 64h |
| 88 | 1.4.1.5 | Nghiệp vụ quản lý đào tạo | 4d | 2024-07-26 | 2024-07-31 | 84, 85 | 0d | Thi | 32h |
| 89 | 1.4.1.6 | Nghiệp vụ báo cáo thống kê | 4d | 2024-07-26 | 2024-07-31 | 81, 86, 87 | 0d | Thi | 32h |
| 90 | 1.4.1.7 | Tổng hợp tài liệu thiết kế sơ đồ phân tích | 2d | 2024-08-01 | 2024-08-02 | 84, 85, 86, 87, 88, 89 | 0d | Mai; Thi | 32h |
| 91 | 1.4.2 | **Thiết kế sơ đồ trình tự cho các chức năng** | 27d | 2024-07-26 | 2024-09-02 |  | 0d |  | 496h |
| 92 | 1.4.2.1 | Nghiệp vụ quản lý hồ sơ nhân sự | 10d | 2024-08-05 | 2024-08-16 | 83 | 10d | Mai | 80h |
| 93 | 1.4.2.2 | Nghiệp vụ chấm công | 10d | 2024-08-05 | 2024-08-16 | 83 | 10d | Mai | 80h |
| 94 | 1.4.2.3 | Nghiệp vụ quản lý lương và chế độ phúc lợi | 10d | 2024-08-05 | 2024-08-16 | 83 | 0d | Thi | 80h |
| 95 | 1.4.2.4 | Nghiệp vụ quản lý tuyển dụng | 10d | 2024-08-05 | 2024-08-16 | 83 | 0d | Thi | 80h |
| 96 | 1.4.2.5 | Nghiệp vụ quản lý đào tạo | 10d | 2024-07-26 | 2024-08-08 | 84, 85 | 16d | Mai | 80h |
| 97 | 1.4.2.6 | Nghiệp vụ báo cáo thống kê | 10d | 2024-08-19 | 2024-08-30 | 83, 94, 95 | 0d | Thi | 80h |
| 98 | 1.4.2.7 | Tổng hợp tài liệu thiết kế sơ đồ trình tự | 1d | 2024-09-02 | 2024-09-02 | 92, 93, 94, 95, 96, 97 | 0d | Mai; Thi | 16h |
| 99 | 1.4.3 | **Thiết kế sơ đồ chi tiết cho các chức năng** | 12d | 2024-09-03 | 2024-09-18 |  | 0d |  | 536h |
| 100 | 1.4.3.1 | Nghiệp vụ quản lý hồ sơ nhân sự | 11d | 2024-09-03 | 2024-09-17 | 91 | 0d | Mai | 88h |
| 101 | 1.4.3.2 | Nghiệp vụ chấm công | 11d | 2024-09-03 | 2024-09-17 | 91 | 0d | Mai | 88h |
| 102 | 1.4.3.3 | Nghiệp vụ quản lý lương và chế độ phúc lợi | 11d | 2024-09-03 | 2024-09-17 | 91 | 0d | Mai | 88h |
| 103 | 1.4.3.4 | Nghiệp vụ quản lý tuyển dụng | 11d | 2024-09-03 | 2024-09-17 | 91 | 0d | Thi | 88h |
| 104 | 1.4.3.5 | Nghiệp vụ quản lý đào tạo | 11d | 2024-09-03 | 2024-09-17 | 91 | 0d | Thi | 88h |
| 105 | 1.4.3.6 | Nghiệp vụ báo cáo thống kê | 11d | 2024-09-03 | 2024-09-17 | 91 | 0d | Thi | 88h |
| 106 | 1.4.3.7 | Tổng hợp tài liệu thiết kế sơ đồ chi tiết | 1d | 2024-09-18 | 2024-09-18 | 100, 101, 102, 103, 104, 105 | 0d | Thi | 8h |

Notes:
- 84: Text1: Tài liệu thiết kế sơ đồ phân tích nghiệp vụ quản lý hồ sơ nhân sự
- 85: Text1: Tài liệu thiết kế sơ đồ phân tích nghiệp vụ quản lý chấm công
- 86: Text1: Tài liệu thiết kế sơ đồ phân tích nghiệp vụ quản lý lương và chế độ phúc lợi
- 87: Text1: Tài liệu thiết kế sơ đồ phân tích nghiệp vụ quản lý tuyển dụng
- 88: Text1: Tài liệu thiết kế sơ đồ phân tích nghiệp vụ quản lý đào tạo
- 89: Text1: Tài liệu thiết kế sơ đồ phân tích nghiệp vụ báo cáo thống kê
- 98: Text1: Tài liệu thiết kế sơ đồ trình tự
- 106: Text1: Tài liệu thiết kế sơ đồ chi tiết

| ID | WBS | Task | Duration | Start | Finish | Predecessors | Total slack | Resources | Work | Text1 |
| --- | --- | --- | --- | --- | --- | --- | --- | --- | --- | --- |
| 107 | 1.4.4 | **Thiết kế cơ sở dữ liệu** | 14d | 2024-09-19 | 2024-10-08 |  | 0d |  | 608h |  |
| 108 | 1.4.4.1 | Nghiệp vụ quản lý hồ sơ nhân sự | 12d | 2024-09-19 | 2024-10-04 | 99 | 0d | Mai | 96h |  |
| 109 | 1.4.4.2 | Nghiệp vụ chấm công | 12d | 2024-09-19 | 2024-10-04 | 99 | 0d | Mai | 96h |  |
| 110 | 1.4.4.3 | Nghiệp vụ quản lý lương và chế độ phúc lợi | 12d | 2024-09-19 | 2024-10-04 | 99 | 0d | Mai | 96h |  |
| 111 | 1.4.4.4 | Nghiệp vụ quản lý tuyển dụng | 12d | 2024-09-19 | 2024-10-04 | 99 | 0d | Thi | 96h |  |
| 112 | 1.4.4.5 | Nghiệp vụ quản lý đào tạo | 12d | 2024-09-19 | 2024-10-04 | 99 | 0d | Thi | 96h |  |
| 113 | 1.4.4.6 | Nghiệp vụ báo cáo thống kê | 12d | 2024-09-19 | 2024-10-04 | 99 | 0d | Thi | 96h |  |
| 114 | 1.4.4.7 | Tổng hợp tài liệu thiết kế CSDL | 2d | 2024-10-07 | 2024-10-08 | 108, 109, 110, 111, 112, 113 | 0d | Mai; Thi | 32h | Tài liệu thiết kế cơ sở dữ liệu |
| 115 | 1.4.5 | **Thiết kế giao diện** | 22d | 2024-10-09 | 2024-11-07 |  | 0d |  | 992h |  |
| 116 | 1.4.5.1 | Nghiệp vụ quản lý hồ sơ nhân sự | 20d | 2024-10-09 | 2024-11-05 | 107 | 0d | Mai | 160h |  |
| 117 | 1.4.5.2 | Nghiệp vụ chấm công | 20d | 2024-10-09 | 2024-11-05 | 107 | 0d | Mai | 160h |  |
| 118 | 1.4.5.3 | Nghiệp vụ quản lý lương và chế độ phúc lợi | 20d | 2024-10-09 | 2024-11-05 | 107 | 0d | Mai | 160h |  |
| 119 | 1.4.5.4 | Nghiệp vụ quản lý tuyển dụng | 20d | 2024-10-09 | 2024-11-05 | 107 | 0d | Thi | 160h |  |
| 120 | 1.4.5.5 | Nghiệp vụ quản lý đào tạo | 20d | 2024-10-09 | 2024-11-05 | 107 | 0d | Thi | 160h |  |
| 121 | 1.4.5.6 | Nghiệp vụ báo cáo thống kê | 20d | 2024-10-09 | 2024-11-05 | 107 | 0d | Thi | 160h |  |
| 122 | 1.4.5.7 | Tổng hợp tài liệu thiết kế giao diện | 2d | 2024-11-06 | 2024-11-07 | 116, 117, 118, 119, 120, 121 | 0d | Mai; Thi | 32h | Tài liệu thiết kế giao diện |
| 123 | 1.4.6 | Tổng hợp tài liệu thiết kế hệ thống | 2d | 2024-11-08 | 2024-11-11 | 115 | 0d | Mai; Thi | 32h | Tài liệu thiết hệ thống |
| 124 | 1.4.7 | MKS / Thiết kế | 1d | 2024-11-12 | 2024-11-12 | 123 | 0d | Khánh; Mai; My; Thi | 32h |  |
| 125 | 1.5 | **Xây dựng hệ thống** | 92d | 2024-11-13 | 2025-03-20 |  | 0d |  | 2480h |  |
| 126 | 1.5.1 | **Xây dựng CSDL** | 12d | 2024-11-13 | 2024-11-28 |  | 0d |  | 288h |  |
| 127 | 1.5.1.1 | Nghiệp vụ quản lý hồ sơ nhân sự | 6d | 2024-11-13 | 2024-11-20 | 124 | 0d | Khánh | 48h |  |
| 128 | 1.5.1.2 | Nghiệp vụ chấm công | 6d | 2024-11-13 | 2024-11-20 | 124 | 0d | Khánh | 48h |  |
| 129 | 1.5.1.3 | Nghiệp vụ quản lý lương và chế độ phúc lợi | 6d | 2024-11-13 | 2024-11-20 | 124 | 0d | Khánh | 48h |  |
| 130 | 1.5.1.4 | Nghiệp vụ quản lý tuyển dụng | 6d | 2024-11-13 | 2024-11-20 | 124 | 0d | My | 48h |  |
| 131 | 1.5.1.5 | Nghiệp vụ quản lý đào tạo | 4d | 2024-11-21 | 2024-11-26 | 124, 127, 128 | 0d | My | 32h |  |
| 132 | 1.5.1.6 | Nghiệp vụ báo cáo thống kê | 4d | 2024-11-21 | 2024-11-26 | 124, 129, 130 | 0d | My | 32h |  |
| 133 | 1.5.1.7 | Tổng hợp tài liệu xây dựng CSDL | 2d | 2024-11-27 | 2024-11-28 | 127, 128, 129, 130, 131, 132 | 0d | Khánh; My | 32h | Tài liệu xây dựng cơ sở dữ liệu |

| ID | WBS | Task | Type | Duration | Start | Finish | Predecessors | Total slack | Resources | Work | Text1 |
| --- | --- | --- | --- | --- | --- | --- | --- | --- | --- | --- | --- |
| 134 | 1.5.2 | **Xây dựng giao diện** |  | 29d | 2024-11-29 | 2025-01-08 |  | 0d |  | 752h |  |
| 135 | 1.5.2.1 | Nghiệp vụ quản lý hồ sơ nhân sự |  | 18d | 2024-11-29 | 2024-12-24 | 126 | 0d | Khánh | 144h |  |
| 136 | 1.5.2.2 | Nghiệp vụ chấm công |  | 18d | 2024-11-29 | 2024-12-24 | 126 | 0d | Khánh | 144h |  |
| 137 | 1.5.2.3 | Nghiệp vụ quản lý lương và chế độ phúc lợi |  | 18d | 2024-11-29 | 2024-12-24 | 126 | 0d | Khánh | 144h |  |
| 138 | 1.5.2.4 | Nghiệp vụ quản lý tuyển dụng |  | 18d | 2024-11-29 | 2024-12-24 | 126 | 0d | My | 144h |  |
| 139 | 1.5.2.5 | Nghiệp vụ quản lý đào tạo |  | 10d | 2024-12-25 | 2025-01-07 | 126, 135, 136 | 0d | My | 80h |  |
| 140 | 1.5.2.6 | Nghiệp vụ báo cáo thống kê |  | 10d | 2024-12-25 | 2025-01-07 | 126, 137, 138 | 0d | My | 80h |  |
| 141 | 1.5.2.7 | Tổng hợp tài liệu xây dựng giao diện |  | 1d | 2025-01-08 | 2025-01-08 | 135, 136, 137, 138, 139, 140 | 0d | Khánh; My | 16h | Tài liệu xây dụng giao diện |
| 142 | 1.5.3 | **Xây dựng chức năng** |  | 37d | 2025-01-09 | 2025-02-28 |  | 0d |  | 1184h |  |
| 143 | 1.5.3.1 | Nghiệp vụ quản lý hồ sơ nhân sự |  | 20d | 2025-01-09 | 2025-02-05 | 134 | 0d | Khánh | 160h |  |
| 144 | 1.5.3.2 | Nghiệp vụ chấm công |  | 20d | 2025-01-09 | 2025-02-05 | 134 | 0d | Mai | 160h |  |
| 145 | 1.5.3.3 | Nghiệp vụ quản lý lương và chế độ phúc lợi |  | 20d | 2025-01-09 | 2025-02-05 | 134 | 0d | My | 160h |  |
| 146 | 1.5.3.4 | Nghiệp vụ quản lý tuyển dụng |  | 20d | 2025-01-09 | 2025-02-05 | 134 | 0d | Thi | 160h |  |
| 147 | 1.5.3.5 | Nghiệp vụ quản lý đào tạo |  | 16d | 2025-02-06 | 2025-02-27 | 134, 143, 144 | 0d | Khánh; Mai | 256h |  |
| 148 | 1.5.3.6 | Nghiệp vụ báo cáo thống kê |  | 16d | 2025-02-06 | 2025-02-27 | 134, 145, 146 | 0d | My; Thi | 256h |  |
| 149 | 1.5.3.7 | Tổng hợp tài liệu xây dựng chức năng |  | 1d | 2025-02-28 | 2025-02-28 | 143, 144, 145, 146, 147, 148 | 0d | Khánh; Mai; My; Thi | 32h | Tài liệu xây dựng chức năng |
| 150 | 1.5.4 | Ghép các module chương trình để tạo một chương trình hoàn chỉnh |  | 8d | 2025-03-03 | 2025-03-12 | 142 | 0d | My; Khánh | 128h | Tài liệu ghép các module |
| 151 | 1.5.5 | Viết tài liêu xây dựng hệ thống |  | 4d | 2025-03-13 | 2025-03-18 | 150 | 0d | My; Khánh | 64h | Tài liệu xây dựng hệ thống |
| 152 | 1.5.6 | MKS / Lập trình | milestone | 2d | 2025-03-19 | 2025-03-20 | 151 | 0d | Khánh; Mai; My; Thi | 64h |  |
| 153 | 1.6 | **Kiếm thử hệ thống** |  | 35d | 2025-03-21 | 2025-05-08 |  | 0d |  | 632h |  |
| 154 | 1.6.1 | Tạo bộ test và kịch bản test |  | 10d | 2025-03-21 | 2025-04-03 | 152 | 0d | Khánh; My | 160h |  |
| 155 | 1.6.2 | Kiểm thử chức năng |  | 7d | 2025-04-04 | 2025-04-14 | 154 | 0d | Khánh | 56h |  |
| 156 | 1.6.3 | Kiểm thử bảo mật |  | 7d | 2025-04-04 | 2025-04-14 | 154 | 0d | My | 56h |  |
| 157 | 1.6.4 | Kiểm thử tích hợp |  | 7d | 2025-04-04 | 2025-04-14 | 154 | 0d | My | 56h |  |
| 158 | 1.6.5 | Sửa lỗi phát hiện được |  | 15d | 2025-04-15 | 2025-05-05 | 155, 156, 157 | 0d | Khánh; My | 240h | Tài liệu sửa lỗi |
| 159 | 1.6.6 | MKS / Kiểm thử và khắc phục lỗi | milestone | 1d | 2025-05-06 | 2025-05-06 | 158 | 0d | Khánh; Mai; My; Thi | 32h |  |
| 160 | 1.6.7 | Tổng hợp tài liệu kiểm thử |  | 2d | 2025-05-07 | 2025-05-08 | 159 | 0d | Khánh; My | 32h | Tài liệu kiểm thử |

| ID | WBS | Task | Type | Duration | Start | Finish | Predecessors | Total slack | Resources | Work | Text1 |
| --- | --- | --- | --- | --- | --- | --- | --- | --- | --- | --- | --- |
| 161 | 1.7 | **Triển khai hệ thống** |  | 11d | 2025-05-09 | 2025-05-23 |  | 0d |  | 216h |  |
| 162 | 1.7.1 | Cài đặt hệ thống |  | 4d | 2025-05-09 | 2025-05-14 | 153 | 0d | Khánh; My | 64h |  |
| 163 | 1.7.2 | **Hướng dẫn sử dụng** |  | 3d | 2025-05-15 | 2025-05-19 |  | 0d |  | 72h |  |
| 164 | 1.7.2.1 | Nhân viên |  | 3d | 2025-05-15 | 2025-05-19 | 162 | 0d | Khánh | 24h | Tài liệu hướng dẫn nhân viên |
| 165 | 1.7.2.2 | Bộ phận nhân sự |  | 3d | 2025-05-15 | 2025-05-19 | 162 | 0d | My | 24h | Tài liệu hướng dẫn bộ phận nhân sự |
| 166 | 1.7.2.3 | Quản lý cấp cao |  | 3d | 2025-05-15 | 2025-05-19 | 162 | 0d | Khánh | 24h | Tài liệu hướng dẫn quản lý cấp cao |
| 167 | 1.7.3 | Viết tài liệu triển khai |  | 3d | 2025-05-20 | 2025-05-22 | 163 | 0d | Khánh; My | 48h | Tài liệu triển khai |
| 168 | 1.7.4 | MKS / Tổng kết dự án | milestone | 1d | 2025-05-23 | 2025-05-23 | 167 | 0d | Khánh; Mai; My; Thi | 32h |  |
